# Project Klinik Mitra Keluarga

Schedule from MS Project, 2018-12-03 to 2019-05-08, costs in Rp.

## Calendars

- Standard: Mon-Fri 08:00-12:00, 13:00-17:00; Sat-Sun off. Exceptions (off unless hours are given): 2018-12-24 to 2018-12-25 (Libur Natal), 2019-01-01 (Libur Tahun Baru), 2019-02-05 (Libur Tahun Baru Imlek), 2019-03-07 (Libur Hari Raya Nyepi), 2019-04-03 (Libur Isra Miraj), 2019-04-19 (Libur Hari Wafat Isa Almasih).

## Resources

| Resource | Unit | Rate |
| --- | --- | --- |
| Sistem Analis |  | 200000 |
| Project Manager |  | 350000 |
| Sistem Desain |  | 300000 |
| Programmer |  | 150000 |
| Sistem Testing |  | 200000 |
| Dokumentasi |  | 100000 |
| Komputer & Laptop | 4 | 10000000 |

## Schedule

| ID | WBS | Task | Type | Duration | Start | Finish | Predecessors | Baseline start | Baseline finish | Baseline duration | Resources | Work | Cost | Baseline cost |
| --- | --- | --- | --- | --- | --- | --- | --- | --- | --- | --- | --- | --- | --- | --- |
| 1 | 1 | **Analisis** |  | 7d | 2018-12-03 | 2018-12-11 |  | 2018-12-03 | 2018-12-11 | 7d |  | 56h | 11,200,000 | 11,200,000 |
| 2 | 1.1 | Wawancara Pelanggan | manual | 3d | 2018-12-03 | 2018-12-05 |  | 2018-12-03 | 2018-12-05 | 3d | Sistem Analis | 24h | 4,800,000 | 4,800,000 |
| 3 | 1.2 | Analisis Kebutuhan Sistem | manual | 4d | 2018-12-06 | 2018-12-11 | 2 | 2018-12-06 | 2018-12-11 | 4d | Sistem Analis | 32h | 6,400,000 | 6,400,000 |
| 4 | 2 | **Perencanaan** |  | 7d | 2018-12-12 | 2018-12-20 | 1 | 2018-12-12 | 2018-12-20 | 7d |  | 56h | 16,800,000 | 16,800,000 |
| 5 | 2.1 | **Desain Antar Muka** |  | 3d | 2018-12-12 | 2018-12-14 | 3 | 2018-12-12 | 2018-12-14 | 3d |  | 24h | 7,200,000 | 7,200,000 |
| 6 | 2.1.1 | Membuat Tampilan Login dan Halaman Utama | manual | 1d | 2018-12-12 | 2018-12-12 | 3 | 2018-12-12 | 2018-12-12 | 1d | Sistem Desain | 8h | 2,400,000 | 2,400,000 |
| 7 | 2.1.2 | Membuat Tampilan Halaman Modul | manual | 1d | 2018-12-13 | 2018-12-13 | 6 | 2018-12-13 | 2018-12-13 | 1d | Sistem Desain | 8h | 2,400,000 | 2,400,000 |
| 8 | 2.1.3 | Membuat Tampilan Halaman Laporan | manual | 1d | 2018-12-14 | 2018-12-14 | 7 | 2018-12-14 | 2018-12-14 | 1d | Sistem Desain | 8h | 2,400,000 | 2,400,000 |
| 9 | 2.2 | **Desain Sistem** |  | 4d | 2018-12-17 | 2018-12-20 | 5 | 2018-12-17 | 2018-12-20 | 4d |  | 32h | 9,600,000 | 9,600,000 |
| 10 | 2.2.1 | Membuat ERD dan DFD | manual | 1d | 2018-12-17 | 2018-12-17 | 8 | 2018-12-17 | 2018-12-17 | 1d | Sistem Desain | 8h | 2,400,000 | 2,400,000 |
| 11 | 2.2.2 | Membuat UML (Usecase Diagram, Sequence Diagram, Activity Diagram, Class Diagram) | manual | 2d | 2018-12-18 | 2018-12-19 | 10 | 2018-12-18 | 2018-12-19 | 2d | Sistem Desain | 16h | 4,800,000 | 4,800,000 |
| 12 | 2.2.3 | Membuat Kamus Data | manual | 1d | 2018-12-20 | 2018-12-20 | 11 | 2018-12-20 | 2018-12-20 | 1d | Sistem Desain | 8h | 2,400,000 | 2,400,000 |
| 13 | 3 | **Membuat Kode Program** |  | 50d | 2018-12-21 | 2019-03-06 | 4 | 2018-12-21 | 2019-03-06 | 50d |  | 400h | 60,000,000 | 60,000,000 |
| 14 | 3.1 | Login dan Halaman Utama | manual | 1d | 2018-12-21 | 2018-12-21 | 12 | 2018-12-21 | 2018-12-21 | 1d | Programmer | 8h | 1,200,000 | 1,200,000 |
| 15 | 3.2 | Modul Data Dokter | manual | 9d | 2018-12-26 | 2019-01-08 | 14 | 2018-12-26 | 2019-01-08 | 9d | Programmer | 72h | 10,800,000 | 10,800,000 |
| 16 | 3.3 | Modul Data Pasien | manual | 9d | 2019-01-09 | 2019-01-21 | 15 | 2019-01-09 | 2019-01-21 | 9d | Programmer | 72h | 10,800,000 | 10,800,000 |
| 17 | 3.4 | Modul Jenis Obat | manual | 9d | 2019-01-22 | 2019-02-01 | 16 | 2019-01-22 | 2019-02-01 | 9d | Programmer | 72h | 10,800,000 | 10,800,000 |
| 18 | 3.5 | Modul Jenis Penyakit | manual | 9d | 2019-02-04 | 2019-02-15 | 17 | 2019-02-04 | 2019-02-15 | 9d | Programmer | 72h | 10,800,000 | 10,800,000 |
| 19 | 3.6 | Modul Data Pegawai | manual | 9d | 2019-02-18 | 2019-02-28 | 18 | 2019-02-18 | 2019-02-28 | 9d | Programmer | 72h | 10,800,000 | 10,800,000 |
| 20 | 3.7 | Laporan | manual | 4d | 2019-03-01 | 2019-03-06 | 19 | 2019-03-01 | 2019-03-06 | 4d | Programmer | 32h | 4,800,000 | 4,800,000 |
| 21 | 4 | Integrasi Program | manual | 2d | 2019-03-08 | 2019-03-11 | 20 | 2019-03-08 | 2019-03-11 | 2d | Programmer | 16h | 2,400,000 | 2,400,000 |
| 22 | 5 | **Uji Coba Program** |  | 6d | 2019-03-12 | 2019-03-19 | 21 | 2019-03-12 | 2019-03-19 | 6d |  | 48h | 9,600,000 | 9,600,000 |
| 23 | 5.1 | Melakukan Uji Coba Program | manual | 2d | 2019-03-12 | 2019-03-13 | 21 | 2019-03-12 | 2019-03-13 | 2d | Sistem Testing | 16h | 3,200,000 | 3,200,000 |
| 24 | 5.2 | Membuat Catatan Perubahan Program | manual | 4d | 2019-03-14 | 2019-03-19 | 23 | 2019-03-14 | 2019-03-19 | 4d | Sistem Testing | 32h | 6,400,000 | 6,400,000 |

| ID | WBS | Task | Type | Duration | Start | Finish | Predecessors | Baseline start | Baseline finish | Baseline duration | Resources | Work | Cost | Baseline cost |
| --- | --- | --- | --- | --- | --- | --- | --- | --- | --- | --- | --- | --- | --- | --- |
| 25 | 6 | **Penyelesaian** |  | 4d | 2019-03-20 | 2019-03-25 | 22 | 2019-03-20 | 2019-03-25 | 4d |  | 32h | 6,400,000 | 6,400,000 |
| 26 | 6.1 | **Instalasi Program** |  | 2d | 2019-03-20 | 2019-03-21 | 24 | 2019-03-20 | 2019-03-21 | 2d |  | 16h | 3,200,000 | 3,200,000 |
| 27 | 6.1.1 | Pengaturan Jaringan, Perangkat Keras dan Perangkat Lunak | manual | 1d | 2019-03-20 | 2019-03-20 | 24 | 2019-03-20 | 2019-03-20 | 1d | Sistem Testing | 8h | 1,600,000 | 1,600,000 |
| 28 | 6.1.2 | Pengaturan Pendukung Aplikasi | manual | 1d | 2019-03-21 | 2019-03-21 | 27 | 2019-03-21 | 2019-03-21 | 1d | Sistem Testing | 8h | 1,600,000 | 1,600,000 |
| 29 | 6.2 | Pelatihan Program | manual | 2d | 2019-03-22 | 2019-03-25 | 26 | 2019-03-22 | 2019-03-25 | 2d | Sistem Testing | 16h | 3,200,000 | 3,200,000 |
| 30 | 7 | **Dokumentasi** |  | 77d | 2018-12-03 | 2019-03-26 |  | 2018-12-03 | 2019-03-26 | 77d |  | 576h | 57,600,000 | 57,600,000 |
| 31 | 7.1 | Dokumentasi Analisis | manual | 7d | 2018-12-03 | 2018-12-11 |  | 2018-12-03 | 2018-12-11 | 7d | Dokumentasi | 56h | 5,600,000 | 5,600,000 |
| 32 | 7.2 | Dokumentasi Perencanaan | manual | 7d | 2018-12-12 | 2018-12-20 |  | 2018-12-12 | 2018-12-20 | 7d | Dokumentasi | 56h | 5,600,000 | 5,600,000 |
| 33 | 7.3 | Dokumentasi Program | manual | 50d | 2018-12-21 | 2019-03-06 |  | 2018-12-21 | 2019-03-06 | 50d | Dokumentasi | 400h | 40,000,000 | 40,000,000 |
| 34 | 7.4 | Dokumentasi Uji Coba Program | manual | 6d | 2019-03-12 | 2019-03-19 |  | 2019-03-12 | 2019-03-19 | 6d | Dokumentasi | 48h | 4,800,000 | 4,800,000 |
| 35 | 7.5 | Dokumentasi Instalasi | manual | 2d | 2019-03-20 | 2019-03-21 |  | 2019-03-20 | 2019-03-21 | 2d | Dokumentasi | 16h | 1,600,000 | 1,600,000 |
| 36 | 8 | Pemeliharaan (Maintenance) | manual | 30d | 2019-03-26 | 2019-05-08 | 29 | 2019-03-26 | 2019-05-08 | 30d | Sistem Testing | 240h | 48,000,000 | 48,000,000 |
| 37 | 9 | **Lain-Lain** |  | 10d | 2019-03-26 | 2019-04-09 | 29 | 2019-03-26 | 2019-04-09 | 10d |  | 136h | 33,600,000 | 33,600,000 |
| 38 | 9.1 | Perubahan Modul | manual | 7d | 2019-03-26 | 2019-04-04 | 29 | 2019-03-26 | 2019-04-04 | 7d | Sistem Desain; Programmer | 112h | 25,200,000 | 25,200,000 |
| 39 | 9.2 | Rapat (Meeting) | manual | 3d | 2019-04-05 | 2019-04-09 | 38 | 2019-04-05 | 2019-04-09 | 3d | Project Manager | 24h | 8,400,000 | 8,400,000 |
